Schedule from MS Project, 2016-10-17 to 2016-11-11.
Microsoft

## Calendars

- 标准: Mon-Fri 08:00-12:00, 13:00-17:00; Sat-Sun off.

## Resources

| Resource |
| --- |
| 陈中宝 |
| 徐洪庆 |
| 王坤洋 |
| 高超 |
| 季骁 |
| 张建秋 |
| 冯继光 |
| 王利敏 |
| 王守严 |
| 仇邓焦 |
| 韩永顺 |
| 吉日木图 |
| 王子超 |
| 孙雪 |

## Schedule

| ID | WBS | Task | Duration | Start | Finish | Predecessors | Total slack | Free slack | Constraint | Resources | Work |
| --- | --- | --- | --- | --- | --- | --- | --- | --- | --- | --- | --- |
| 1 | 1 | **中证报价APP优化工作** | 19.12d | 2016-10-17 | 2016-11-11 |  | 0d |  |  |  | 740h |
| 2 | 1.1 | **iOS** | 7d | 2016-10-17 | 2016-10-26 |  | 12d |  |  |  | 204h |
| 3 | 1.1.1 | **App工程目录改造** | 1d | 2016-10-17 | 2016-10-18 |  | 13d |  |  |  | 8h |
| 4 | 1.1.1.1 | AppDelegate文件转移到 Main模块 | 0.1d | 2016-10-17 | 2016-10-17 |  | 13d | 0d | start no earlier than 2016-10-17 | 陈中宝 | 0.8h |
| 5 | 1.1.1.2 | 将分散在其它目录里面的工具类、分类等类集中到Main模块对应的目录里面 | 0.2d | 2016-10-17 | 2016-10-17 | 4 | 13d | 0d |  | 陈中宝 | 1.6h |
| 6 | 1.1.1.3 | 将Plugin目录移动到Classes/Main/Lib下面 | 0.1d | 2016-10-17 | 2016-10-17 | 5 | 13d | 0d |  | 陈中宝 | 0.8h |
| 7 | 1.1.1.4 | 整理Classes同级的Frameworks目录 | 0.2d | 2016-10-17 | 2016-10-17 | 6 | 13d | 0d |  | 陈中宝 | 1.6h |
| 8 | 1.1.1.5 | 整理Classes同级目录Resource里面的图片文件 | 0.2d | 2016-10-17 | 2016-10-17 | 7 | 13d | 0d |  | 陈中宝 | 1.6h |
| 9 | 1.1.1.6 | Classes所在目录的plist文件转移到Resource目录 | 0.2d | 2016-10-17 | 2016-10-18 | 8 | 13d | 0d |  | 陈中宝 | 1.6h |
| 10 | 1.1.2 | **统一UI库** | 7d | 2016-10-17 | 2016-10-26 |  | 12d |  |  |  | 64h |
| 11 | 1.1.2.1 | 创建基类库 | 1d | 2016-10-17 | 2016-10-18 |  | 12d | 0d | start no earlier than 2016-10-17 | 季骁 | 8h |
| 12 | 1.1.2.2 | 所有继承于系统控件的控件统统改成继承于自定义的基础控件 | 4d | 2016-10-18 | 2016-10-24 | 11 | 12d | 0d |  | 季骁 | 32h |
| 13 | 1.1.2.3 | Alert封装 | 1d | 2016-10-24 | 2016-10-25 | 12 | 12d | 0d |  | 季骁 | 8h |
| 14 | 1.1.2.4 | 将代码中所有使用到UIAlertController的代码统统替换为封装后的Alert | 1d | 2016-10-25 | 2016-10-26 | 13 | 12d |  |  | 季骁 | 8h |
| 15 | 1.1.2.5 | 统一下拉刷新库 | 1d | 2016-10-17 | 2016-10-18 |  | 13d | 0d | start no earlier than 2016-10-17 | 高超 | 8h |
| 16 | 1.1.3 | **网络相关修改** | 6.5d | 2016-10-17 | 2016-10-25 |  | 12.5d |  |  |  | 72h |
| 17 | 1.1.3.1 | 创建NetConfig.h文件，将分散在各个文件中的URL地址、域名等跟网络配置有关的内容都转移到这个文件中 | 2d | 2016-10-17 | 2016-10-19 |  | 12.5d | 0d | start no earlier than 2016-10-17 | 王坤洋 | 16h |
| 18 | 1.1.3.2 | 升级网络框架 - AFN | 0.5d | 2016-10-18 | 2016-10-18 | 9 | 13d | 0d |  | 陈中宝 | 4h |
| 19 | 1.1.3.3 | 网络请求工具SSHttptool改造 | 2d | 2016-10-18 | 2016-10-20 | 18 | 13d | 0d |  | 陈中宝 | 16h |
| 20 | 1.1.3.4 | 网络请求工具增加合适的请求头 | 0.5d | 2016-10-19 | 2016-10-19 | 17 | 12.5d | 0d |  | 王坤洋 | 4h |
| 21 | 1.1.3.5 | 不能在本地存储明文密码 | 1d | 2016-10-19 | 2016-10-20 | 20 | 12.5d | 0d |  | 王坤洋 | 8h |
| 22 | 1.1.3.6 | 将所有的用到网络请求工具的地方都替换为最新的方法 | 3d | 2016-10-20 | 2016-10-25 | 21 | 12.5d |  |  | 王坤洋 | 24h |
| 23 | 1.1.4 | **三方库配置信息修改** | 4.5d | 2016-10-18 | 2016-10-24 |  | 13d |  |  |  | 36h |
| 24 | 1.1.4.1 | 创建ThirdPlatformConfig.plist用于存放这些配置信息 | 0.5d | 2016-10-18 | 2016-10-18 | 15 | 13d | 0d |  | 高超 | 4h |
| 25 | 1.1.4.2 | 创建ThirdPlatformConfig类来管理这些配置信息，并且将分散在各个文件中的配置信息替换为这个类的属性 | 1.5d | 2016-10-18 | 2016-10-20 | 24 | 13d | 0d |  | 高超 | 12h |
| 26 | 1.1.4.3 | 前端和后端的交互协议应该改为 https | 1.5d | 2016-10-20 | 2016-10-21 | 25 | 13d | 0d |  | 高超 | 12h |
| 27 | 1.1.4.4 | 创建统一的分享服务，并替换到所有代码 | 1d | 2016-10-21 | 2016-10-24 | 26 | 13d | 0d |  | 高超 | 8h |

Notes:
- 3: 特别是三方库的文件放置非常混乱，重点改造
- 7: 1、这个目录和 /Main/Lib的功能重复，需要删除并转移其中的文件到 /Main/Lib 里面，，注意创建合理的目录 / 2、看看这个 Frameworks 目录里面的那些不知道从哪里来的AFN的类文件是可以去掉，毕竟现在是使用 cocoapods来管理AFN的
- 8: 这里面的图片文件有的在工程里出现有的有没有出现，看看有没有用，没用的删除，有用处的转移到Images.xcassets 里面
- 9: info.plist不许移动
- 11: 创建项目常用的控制器基类、常用view基类，项目中所有的控制器要进行修改，继承自这些库 / 主要有： / 基础的控制器、基础的导航控制器、基础的UITableView、基础的view、基础的UIButton、基础的UILabel、基础的Cell、基础的UITextField、基础的WKWebView、基础的Model(模型)
- 13: 对 UIAlertController的功能进行封装，使用更简单
- 15: 目前项目中用到了至少两个三方的刷新库，需要全部替换为 MJRefresh
- 18: 目前，该网络请求工具引用的AFN的版本还是较旧的 Beta 版本，需要改成新的 Release 版本
- 19: 1、改为单例模式，参照 HLHttptool的属性、方法 / 2、其现有的方法有的完全没有被调用过。/ 最常用的方法 -loadDataWithUrl... 不合理。/ 改造参照 HLHttptool / 3、若有方法不能改造，目前该工具使用的AFN的方法已经被废弃，需要更新到最新的 / 多网络请求并发的问题需要关注
- 20: 改成什么样需要进行讨论，可以参考 HLHttpTool
- 21: 进行sha256之后再存储
- 23: 主要针对微信、极光等需要配置信息的三方库
- 24: 例如AppId、SecureKey 等内容
- 27: 现在的分享代码凌乱分散，需要进行封装

| ID | WBS | Task | Type | Duration | Start | Finish | Predecessors | Total slack | Free slack | Constraint | Resources | Work |
| --- | --- | --- | --- | --- | --- | --- | --- | --- | --- | --- | --- | --- |
| 28 | 1.1.5 | **统一的用户信息管理** |  | 2.5d | 2016-10-20 | 2016-10-25 |  | 13d |  |  |  | 20h |
| 29 | 1.1.5.1 | 创建用户信息管理工具和用户信息类来管理用户相关的信息 |  | 0.5d | 2016-10-20 | 2016-10-21 | 19 | 13d | 0d |  | 陈中宝 | 4h |
| 30 | 1.1.5.2 | 将所有文件中用到相关信息的地方统统替换为新的方式存取 |  | 1d | 2016-10-21 | 2016-10-24 | 29 | 13d | 0d |  | 陈中宝 | 8h |
| 31 | 1.1.5.3 | 对本地数据库进行加密 |  | 1d | 2016-10-24 | 2016-10-25 | 30 | 13d |  |  | 陈中宝 | 8h |
| 32 | 1.1.6 | **需要增加的工具类** |  | 0.5d | 2016-10-24 | 2016-10-25 |  | 13d |  |  |  | 4h |
| 33 | 1.1.6.1 | 图片加载中间件 |  | 0.5d | 2016-10-24 | 2016-10-25 | 27 | 13d |  |  | 高超 | 4h |
| 34 | 1.1.7 | **暂不列入计划** | inactive | 1d? | 2016-10-17 | 2016-10-18 |  | 18d |  |  |  |  |
| 35 | 1.1.7.1 | Storyboard 转 代码 | inactive | 1d? | 2016-10-17 | 2016-10-18 |  | 18d |  |  |  |  |
| 36 | 1.1.7.2 | 产品列表页面重写 | inactive | 1d? | 2016-10-17 | 2016-10-18 |  | 18d |  |  |  |  |
| 37 | 1.1.7.3 | 统一屏幕适配方式 | inactive | 1d? | 2016-10-17 | 2016-10-18 |  | 18d |  |  |  |  |
| 38 | 1.1.7.4 | 密钥管理工具 | inactive | 1d? | 2016-10-17 | 2016-10-18 |  | 18d |  |  |  |  |
| 39 | 1.2 | **Android** |  | 19.12d | 2016-10-17 | 2016-11-11 |  | 0d |  |  |  | 456h |
| 40 | 1.2.1 | **开发工具调整** |  | 2d | 2016-10-17 | 2016-10-19 |  | 3d |  |  |  | 32h |
| 41 | 1.2.1.1 | 开发环境迁移至AndroidStudio |  | 2d | 2016-10-17 | 2016-10-19 |  | 3d | 0d |  | 张建秋 | 16h |
| 42 | 1.2.1.2 | 代码整理（无用臃肿代码，无效资源，包结构调整） |  | 2d | 2016-10-17 | 2016-10-19 |  | 3d | 0d |  | 冯继光 | 16h |
| 43 | 1.2.2 | **架构调整** |  | 11.12d | 2016-10-17 | 2016-11-01 |  | 5.12d |  |  |  | 168h |
| 44 | 1.2.2.1 | **公共模块、基类封装** |  | 10.12d | 2016-10-17 | 2016-10-31 |  | 5.12d |  |  |  | 120h |
| 45 | 1.2.2.1.1 | 统一根控制器及封装（提供统一管理控制器功能，公共UI部分管理） |  | 2d | 2016-10-19 | 2016-10-21 | 42 | 3d | 0d |  | 冯继光 | 16h |
| 46 | 1.2.2.1.2 | 界面框架（tab切换 ） |  | 2d | 2016-10-21 | 2016-10-25 | 45 | 3d | 0d |  | 冯继光 | 16h |
| 47 | 1.2.2.1.3 | 图片公共处理类 |  | 1d | 2016-10-17 | 2016-10-17 |  | 15.12d | 0d | start no earlier than 2016-10-17 | 王利敏 | 8h |
| 48 | 1.2.2.1.4 | 启动、退出统一管理 |  | 1d | 2016-10-19 | 2016-10-20 | 41 | 3d | 0d |  | 张建秋 | 8h |
| 49 | 1.2.2.1.5 | 推送统一管理 |  | 1d | 2016-10-20 | 2016-10-21 | 48 | 3d | 0d |  | 张建秋 | 8h |
| 50 | 1.2.2.1.6 | 日志库 |  | 1d | 2016-10-25 | 2016-10-26 | 46 | 3d | 0d |  | 冯继光 | 8h |
| 51 | 1.2.2.1.7 | 异常框架 |  | 2d | 2016-10-18 | 2016-10-19 | 47 | 15.12d | 0d |  | 王利敏 | 16h |
| 52 | 1.2.2.1.8 | 开发模式可配置（debug，release分别走不同逻辑）减少开发人员个性配置 |  | 1d | 2016-10-26 | 2016-10-27 | 50 | 3d | 0d |  | 冯继光 | 8h |
| 53 | 1.2.2.1.9 | 分享业务统一 |  | 1d | 2016-10-20 | 2016-10-20 | 51 | 15.12d |  | start no earlier than 2016-10-17 | 王利敏 | 8h |
| 54 | 1.2.2.1.10 | 字符串转换，判空，类型转换类等工具类封装 |  | 1d | 2016-10-21 | 2016-10-24 | 49 | 3d | 0d | start no earlier than 2016-10-17 | 张建秋 | 8h |
| 55 | 1.2.2.1.11 | 数据库模块 |  | 1d | 2016-10-27 | 2016-10-28 | 52 | 3d | 0d |  | 王利敏 | 8h |
| 56 | 1.2.2.1.12 | 缓存模块 |  | 1d | 2016-10-28 | 2016-10-31 | 55 | 3d | 0d |  | 王利敏 | 8h |

Notes:
- 28: 目前本地的用户相关信息(比如sessionId)都是直接使用 NSUserDefaults 进行存取的，分散而且麻烦
- 29: sessionId不属于用户信息，不在用户信息类里面，交给用户信息管理工具来持有
- 31: 现有App的本地数据库是没有进行加密的，需要改为加密
- 33: 用来对SDWebImage框架进行隔离， / 弄好之后对需要的地方进行替换
- 41: 当前使用Eclipse+Ant 构建方式：Eclipse插件方式Android官方不再支持，Ant构建已经过时，编译速度慢，没有很好第三方库管理机制，不支持后续的多模块构建，不支持编译时动态打包配置；
- 42: 代码中存在demo 示例，无效资源，没用的代码，大量注释的代码，包结构划分不合理；
- 45: 处理公共逻辑，公共UI部分，易于扩展新功能；
- 46: 目前tab切换有点卡顿
- 47: 目前项目使用imageloader：1、已经不再维护；2、每个页面都重新配置，初始化； / 建议使用Android官方图片库并适配项目；
- 48: 启动版本合法性检查，配置初始化，退出资源释放，配置初始化，优化前后台切换界面，以及状态保持；
- 49: 统一推送消息管理，避免各页面分别处理
- 50: 目前项目日志不可关闭，release时也可打印日志，导致数据泄露
- 51: 没有异常处理类，无法捕捉异常，并上报；
- 52: 基于AndroidStudio开发环境 可配置化
- 53: 统一处理分享逻辑，避免重复逻辑散落各个页面
- 54: 分布散落，功能完善，结构调整
- 55: 敏感数据库数据加密
- 56: 数据预加载，无网络时，缓存

| ID | WBS | Task | Type | Duration | Start | Finish | Predecessors | Total slack | Free slack | Constraint | Resources | Work |
| --- | --- | --- | --- | --- | --- | --- | --- | --- | --- | --- | --- | --- |
| 57 | 1.2.2.2 | **用户模块** |  | 6d | 2016-10-24 | 2016-11-01 |  | 3d |  |  |  | 24h |
| 58 | 1.2.2.2.1 | 用户密码管理 |  | 0.5d | 2016-10-24 | 2016-10-24 | 54 | 3d | 0d |  | 张建秋 | 4h |
| 59 | 1.2.2.2.2 | 加密工具类 |  | 0.5d | 2016-10-24 | 2016-10-25 | 58 | 3d | 0d |  | 张建秋 | 4h |
| 60 | 1.2.2.2.3 | 权限管理 |  | 1d | 2016-10-27 | 2016-10-28 | 52 | 6d | 0d |  | 冯继光 | 8h |
| 61 | 1.2.2.2.4 | 用户行为 |  | 1d | 2016-10-31 | 2016-11-01 | 56 | 3d | 0d |  | 王利敏 | 8h |
| 62 | 1.2.2.3 | **UI组件库** |  | 3d | 2016-10-25 | 2016-10-28 |  | 3d |  |  |  | 24h |
| 63 | 1.2.2.3.1 | 上拉下拉（可统一修改样式） |  | 1d | 2016-10-25 | 2016-10-26 | 59 | 3d | 0d |  | 张建秋 | 8h |
| 64 | 1.2.2.3.2 | 适配器Adapter封装 |  | 1d | 2016-10-26 | 2016-10-27 | 63 | 3d | 0d |  | 张建秋 | 8h |
| 65 | 1.2.2.3.3 | 对话框、Toast统一处理 |  | 1d | 2016-10-27 | 2016-10-28 | 64 | 3d | 0d |  | 张建秋 | 8h |
| 66 | 1.2.3 | 代码安全（混淆） |  | 1d | 2016-10-28 | 2016-10-31 | 60 | 6d | 0d |  | 冯继光 | 8h |
| 67 | 1.2.4 | **网络框架统一并集成至项目（注意错误码分层管理）（预估按200个接口算）** |  | 10d | 2016-10-28 | 2016-11-11 |  | 0d |  |  |  | 232h |
| 68 | 1.2.4.1 | 封装功能并集成至项目 |  | 2d | 2016-10-28 | 2016-11-01 | 65 | 3d | 0d |  | 张建秋 | 16h |
| 69 | 1.2.4.2 | 每天调试调通7个 |  | 5d | 2016-11-01 | 2016-11-08 | 68 | 3d |  |  | 张建秋 | 40h |
| 70 | 1.2.4.3 | 每天调试调通7个 |  | 5d | 2016-11-01 | 2016-11-08 | 61 | 3d |  |  | 王利敏 | 40h |
| 71 | 1.2.4.4 | 每天调试调通7个 |  | 8d | 2016-11-01 | 2016-11-11 |  | 0d |  | start no earlier than 2016-11-01 | 王守严 | 64h |
| 72 | 1.2.4.5 | 每天调试调通7个 |  | 8d | 2016-11-01 | 2016-11-11 |  | 0d |  | start no earlier than 2016-11-01 | 仇邓焦 | 64h |
| 73 | 1.2.4.6 | 每天调试调通7个 |  | 1d | 2016-10-31 | 2016-11-01 | 66 | 6d | 0d |  | 冯继光 | 8h |
| 74 | 1.2.5 | 内存检测优化 |  | 2d | 2016-11-01 | 2016-11-03 | 73 | 6d |  |  | 冯继光 | 16h |
| 75 | 1.2.6 | **待定** | inactive | 1d? | 2016-10-17 | 2016-10-18 |  | 18d |  |  |  |  |
| 76 | 1.2.6.1 | 特效处理 | inactive | 1d? | 2016-10-17 | 2016-10-18 |  | 18d |  |  |  |  |
| 77 | 1.2.6.2 | ListView功能封装（有无网、有无数据功能统一封装成公共类） | inactive | 1d? | 2016-10-17 | 2016-10-18 |  | 18d |  |  |  |  |
| 78 | 1.2.6.3 | 自定义键盘（需考虑加密功能） | inactive | 1d? | 2016-10-17 | 2016-10-18 |  | 18d |  |  |  |  |
| 79 | 1.3 | **app后台** |  | 17d | 2016-10-17 | 2016-11-09 |  | 2d |  |  |  | 80h |
| 80 | 1.3.1 | 设计文档 |  | 4d | 2016-10-17 | 2016-10-21 |  | 2d | 0d |  | 韩永顺 | 32h |
| 81 | 1.3.2 | 功能与包目录规划 |  | 1d | 2016-10-21 | 2016-10-24 | 80 | 2d | 0d |  | 韩永顺 | 8h |
| 82 | 1.3.3 | 控制层以及service层的父类与公共方法 |  | 2d | 2016-10-24 | 2016-10-26 | 81 | 2d | 0d |  |  |  |
| 83 | 1.3.4 | 异常处理，尤其是透传 |  | 3d | 2016-10-24 | 2016-10-27 | 81 | 9d | 0d | start no earlier than 2016-10-14 | 韩永顺 | 24h |
| 84 | 1.3.5 | 异常提示信息管理，转译 |  | 2d | 2016-10-27 | 2016-10-31 | 83 | 9d |  |  | 韩永顺 | 16h |
| 85 | 1.3.6 | app错误信息收集 |  | 2d | 2016-10-26 | 2016-10-28 | 82 | 2d | 0d |  |  |  |
| 86 | 1.3.7 | Httpclient连接池使用与测试 |  | 2d | 2016-10-28 | 2016-11-01 | 85 | 2d | 0d |  |  |  |
| 87 | 1.3.8 | 用户访问数据与响应时间统计,包括日志切换实现 |  | 3d | 2016-11-01 | 2016-11-04 | 86 | 2d | 0d | start no earlier than 2016-10-14 |  |  |
| 88 | 1.3.9 | 访问安全控制 |  | 2d | 2016-11-04 | 2016-11-08 | 87 | 2d | 0d | start no earlier than 2016-10-14 |  |  |
| 89 | 1.3.10 | Mybatis的sql文件优化，sql以及文件位置 |  | 1d | 2016-11-08 | 2016-11-09 | 88 | 2d |  |  |  |  |

Notes:
- 59: 没有统一的加密工具类
- 60: 统一管理页面权限
- 61: 用户行为轨迹上传服务器
- 63: 两套刷新，去掉一套，并修复原有一套的bug
- 64: 没有统一适配器无法扩展新功能
- 65: 统一风格
- 66: 一定程度上保护代码安全
- 67: 目前项目中存在4个在用网络框架和1个没用的网络框架，需要统一替换，利于开发人员开发和后期维护
- 81: 1.从业务层面,有哪些数据需要进行统计与落库 / 2.输出必要目录下的不同数据输出 / 3.若有挡板，可以对本身进行压力测试等
- 82: 1.编写控制层的基础类，便于公共方法的封装 / 2.编写控制层的异常捕获 / 3.数据层、服务层异常分离 / 4.service层公共方法封装
- 83: 1.透传请求服务没有异常处理，建议可以捕获 / 2.透传服务层可以做一些切面，进行挡板(延期)
- 84: 1.提示信息统一管理与配置，便于修改与配置
- 86: 主要是提升响应时间考虑
- 87: 一些数据的统计与日志输出，如没有必要，可忽略
- 88: 1.请求头的校验 / 2.身份认证，对sessionId的安全认证
- 89: 1.sql文件的位置，资源文件与代码进行分离 / 2.sql语句的优化等

| ID | WBS | Task | Duration | Start | Finish | Predecessors | Total slack | Free slack | Constraint | Resources | Work |
| --- | --- | --- | --- | --- | --- | --- | --- | --- | --- | --- | --- |
| 90 | 2 | **中证报价APP10月底版本测试工作** | 9d | 2016-10-17 | 2016-10-28 |  | 10d |  |  | 吉日木图; 王子超; 孙雪 | 216h |
| 91 | 2.1 | 测试用例准备 | 1d | 2016-10-17 | 2016-10-18 |  | 18d |  |  |  |  |
| 92 | 2.2 | 参与人测试用例 | 2d | 2016-10-18 | 2016-10-20 |  | 10d | 0d | start no earlier than 2016-10-18 |  |  |
| 93 | 2.3 | 询报价功能用例 | 2d | 2016-10-18 | 2016-10-20 |  | 10d | 0d | start no earlier than 2016-10-18 |  |  |
| 94 | 2.4 | **第一轮测试** | 3d | 2016-10-20 | 2016-10-25 |  | 10d | 0d |  |  |  |
| 95 | 2.4.1 | 参与人功能测试 | 2d | 2016-10-20 | 2016-10-24 | 92, 93 | 10d | 0d |  |  |  |
| 96 | 2.4.2 | 询报价功能测试 | 2d | 2016-10-20 | 2016-10-24 | 92, 93 | 10d | 0d |  |  |  |
| 97 | 2.4.3 | 测试问题回归 | 1d | 2016-10-24 | 2016-10-25 | 95, 96 | 10d |  |  |  |  |
| 98 | 2.5 | **第二轮测试** | 3d | 2016-10-25 | 2016-10-28 |  | 10d |  |  |  |  |
| 99 | 2.5.1 | 参与人功能测试 | 2d | 2016-10-25 | 2016-10-27 | 94 | 10d | 0d |  |  |  |
| 100 | 2.5.2 | 询报价功能测试 | 2d | 2016-10-25 | 2016-10-27 | 94 | 10d | 0d |  |  |  |
| 101 | 2.5.3 | 测试问题回归 | 1d | 2016-10-27 | 2016-10-28 | 99, 100 | 10d |  |  |  |  |
